# ProjectX

Schedule from MS Project, 2016-09-29 to 2017-04-21.

## Calendars

- Standard: Mon-Fri 08:00-12:00, 13:00-17:00; Sat-Sun off.

## Resources

| Resource |
| --- |
| Customer |
| Customer |

## Schedule

| ID | WBS | Task | Type | Duration | Start | Finish | Predecessors | Total slack | Free slack | Resources | Work |
| --- | --- | --- | --- | --- | --- | --- | --- | --- | --- | --- | --- |
| 1 | 1 | **Scope Phase** |  | 11d | 2016-09-29 | 2016-10-13 |  | 0d |  |  | 48h |
| 2 | 1.1 | Write Customer Requirements Sheet |  | 5d | 2016-09-29 | 2016-10-05 |  | 0d |  | Customer | 40h |
| 3 | 1.2 | Team Meeting: Compare Notes on Requirements |  | 1d | 2016-10-06 | 2016-10-06 | 2 | 0d |  |  |  |
| 4 | 1.3 | Customer Meeting: Discuss Product Goals |  | 1d | 2016-10-07 | 2016-10-07 | 3 | 0d |  | Customer | 8h |
| 5 | 1.4 | Determine Project Scope |  | 2d | 2016-10-10 | 2016-10-11 | 4 | 0d |  |  |  |
| 6 | 1.5 | Write Document: Short Description |  | 2d | 2016-10-12 | 2016-10-13 | 5 | 0d |  |  |  |
| 7 | 1.6 | Product Scope Defined | milestone | 0d | 2016-10-13 | 2016-10-13 | 6 | 0d |  |  |  |
| 8 | 2 | **Analysis/Design Phase** |  | 20d | 2016-10-14 | 2016-11-10 | 7 | 0d |  |  |  |
| 9 | 2.1 | Create Software Engineering Diagrams |  | 8d | 2016-10-14 | 2016-10-25 |  | 0d |  |  |  |
| 10 | 2.2 | Create UI Wireframes |  | 8d | 2016-10-26 | 2016-11-04 | 9 | 0d |  |  |  |
| 11 | 2.3 | Construct/Edit Document |  | 4d | 2016-11-07 | 2016-11-10 | 10 | 0d |  |  |  |
| 12 | 2.4 | Document Completed: Requirements Specification | milestone | 0d | 2016-11-10 | 2016-11-10 | 11 | 0d |  |  |  |
| 13 | 3 | **Product Workflow Setup** |  | 10d | 2016-11-11 | 2016-11-24 | 12 | 0d |  |  |  |
| 14 | 3.1 | Basic Meteor Site |  | 4d | 2016-11-11 | 2016-11-16 |  | 0d |  |  |  |
| 15 | 3.2 | GitHub Pull Request Development |  | 1d | 2016-11-17 | 2016-11-17 | 14 | 0d |  |  |  |
| 16 | 3.3 | Deployment Workflow Development |  | 4d | 2016-11-18 | 2016-11-23 | 15 | 0d |  |  |  |
| 17 | 3.4 | Meeting: Determine Team Roles |  | 1d | 2016-11-24 | 2016-11-24 | 16 | 0d |  |  |  |
| 18 | 4 | **Non-Functional Front-End Skeleton** |  | 16d | 2016-11-25 | 2016-12-16 | 17 | 0d |  |  |  |
| 19 | 4.1 | Design Front-End to Look Like Existing Web Site Format |  | 8d | 2016-11-25 | 2016-12-06 |  | 4d | 0d |  |  |
| 20 | 4.2 | Model Front End Templates after UI Wireframes |  | 8d | 2016-11-25 | 2016-12-06 | 19FF | 4d | 0d |  |  |
| 21 | 4.3 | Site Map Skeleton and Routing |  | 4d | 2016-12-07 | 2016-12-12 | 20 | 4d |  |  |  |
| 22 | 4.4 | Create schema in Mongo |  | 8d | 2016-11-25 | 2016-12-06 |  | 0d |  |  |  |
| 23 | 4.5 | Create Meteor Templates to Show Data |  | 8d | 2016-12-07 | 2016-12-16 | 22 | 0d |  |  |  |
| 24 | 4.6 | Login System |  | 8d | 2016-11-25 | 2016-12-06 |  | 0d |  |  |  |
| 25 | 4.7 | Admin/User Security |  | 8d | 2016-12-07 | 2016-12-16 | 24 | 0d |  |  |  |
| 26 | 4.8 | Functional Site (No Business Logic) | milestone | 0d | 2016-12-16 | 2016-12-16 | 25, 23, 21 | 0d |  |  |  |

| ID | WBS | Task | Type | Duration | Start | Finish | Predecessors | Total slack | Free slack |
| --- | --- | --- | --- | --- | --- | --- | --- | --- | --- |
| 27 | 5 | **Feature: User Creation** |  | 16d | 2016-12-19 | 2017-01-09 | 26 | 0d |  |
| 28 | 5.1 | Create New User Form |  | 8d | 2016-12-19 | 2016-12-28 |  | 0d |  |
| 29 | 5.2 | Add Users to Database Using Meteor |  | 8d | 2016-12-19 | 2016-12-28 |  | 0d |  |
| 30 | 5.3 | Integrate Front End and Back End |  | 8d | 2016-12-29 | 2017-01-09 | 29, 28 | 0d |  |
| 31 | 6 | **Feature: Film Submission** |  | 14d | 2017-01-10 | 2017-01-27 | 30 | 0d |  |
| 32 | 6.1 | Create User Upload Form |  | 4d | 2017-01-10 | 2017-01-13 |  | 0d |  |
| 33 | 6.2 | Backend Code to Save to Database |  | 8d | 2017-01-16 | 2017-01-25 | 32 | 0d |  |
| 34 | 6.3 | Find Media Upload Meteor Package |  | 2d | 2017-01-10 | 2017-01-11 |  | 4d | 0d |
| 35 | 6.4 | Use Package to Save Uploaded Media |  | 8d | 2017-01-12 | 2017-01-23 | 34 | 4d |  |
| 36 | 6.5 | Mail Server & Notifications Integration |  | 4d | 2017-01-10 | 2017-01-13 |  | 8d |  |
| 37 | 6.6 | Link Email Admin to Film Submission |  | 2d | 2017-01-26 | 2017-01-27 | 36, 33 | 0d |  |
| 38 | 6.7 | Film Can Be Uploaded | milestone | 0d | 2017-01-27 | 2017-01-27 | 37, 35 | 0d |  |
| 39 | 7 | **Feature: Film Reviews** |  | 12d | 2017-01-30 | 2017-02-14 | 38 | 0d |  |
| 40 | 7.1 | Update Database to Have User Roles |  | 2d | 2017-01-30 | 2017-01-31 |  | 2d | 0d |
| 41 | 7.2 | Create UI For Staff Film Reviews |  | 8d | 2017-02-01 | 2017-02-10 | 42FF, 40 | 2d |  |
| 42 | 7.3 | Use Media Package to Display Streaming |  | 4d | 2017-01-30 | 2017-02-02 |  | 8d | 6d |
| 43 | 7.4 | Create Logic To Save Reviews to DB |  | 2d | 2017-01-30 | 2017-01-31 |  | 0d |  |
| 44 | 7.5 | Find Calendar Meteor Package |  | 2d | 2017-02-01 | 2017-02-02 | 43 | 0d |  |
| 45 | 7.6 | Integrate Calendar Package with Scheduling |  | 8d | 2017-02-03 | 2017-02-14 | 44 | 0d |  |
| 46 | 7.7 | Customer Meeting: Show Submission and Review MVP | milestone | 0d | 2017-02-14 | 2017-02-14 | 45, 41 | 0d |  |
| 47 | 8 | **Feature: Calendar Management** |  | 12d | 2017-02-15 | 2017-03-02 | 46 | 0d |  |
| 48 | 8.1 | Create UI for Admin View Films |  | 4d | 2017-02-15 | 2017-02-20 |  | 0d |  |
| 49 | 8.2 | Integrate Calendar on Films Page |  | 4d | 2017-02-21 | 2017-02-24 | 48 | 0d |  |
| 50 | 8.3 | Write Scheudle to Database |  | 4d | 2017-02-27 | 2017-03-02 | 49 | 0d |  |

| ID | WBS | Task | Type | Duration | Start | Finish | Predecessors | Total slack | Free slack |
| --- | --- | --- | --- | --- | --- | --- | --- | --- | --- |
| 51 | 9 | **Feature: Bookings** |  | 16d | 2017-03-03 | 2017-03-24 | 50 | 0d |  |
| 52 | 9.1 | Retreive All Films from DB |  | 2d | 2017-03-03 | 2017-03-06 |  | 6d | 0d |
| 53 | 9.2 | Create Bookings Listing Page |  | 8d | 2017-03-07 | 2017-03-16 | 52 | 6d |  |
| 54 | 9.3 | Create Shopping Cart |  | 8d | 2017-03-03 | 2017-03-14 |  | 0d |  |
| 55 | 9.4 | Create Checkout |  | 8d | 2017-03-15 | 2017-03-24 | 54 | 0d |  |
| 56 | 9.5 | Integrate With Payment Processing |  | 4d | 2017-03-21 | 2017-03-24 | 55FF | 20d |  |
| 57 | 9.6 | Email Receipt |  | 2d | 2017-03-03 | 2017-03-06 |  | 14d |  |
| 58 | 9.7 | Customer Meeting: Show Bookings MVP | milestone | 0d | 2017-03-24 | 2017-03-24 | 53, 57, 55 | 0d |  |
| 59 | 10 | **Feature: User Management** |  | 4d | 2017-03-27 | 2017-03-30 | 58 | 0d |  |
| 60 | 10.1 | Create User View Page |  | 4d | 2017-03-27 | 2017-03-30 |  | 0d |  |
| 61 | 10.2 | Allow Admin to Define User Roles in DB |  | 2d | 2017-03-27 | 2017-03-28 |  | 2d |  |
| 62 | 11 | **Final Testing Phase** |  | 16d | 2017-03-31 | 2017-04-21 | 61, 60 | 0d |  |
| 63 | 11.1 | Run Through Testing with Team |  | 16d | 2017-03-31 | 2017-04-21 |  | 0d |  |
| 64 | 11.2 | Provide Application to Client for Testing | milestone | 0d | 2017-04-21 | 2017-04-21 | 63 | 0d |  |
